# 20 kW On-Grid Residential Solar System

Schedule from MS Project, 2026-10-05 to 2026-11-02.
Installation programme for a 20 kW residential rooftop system. The start date is an example.

## Calendars

- Six-day week (Mon to Sat): Mon-Sat 08:00-12:00, 13:00-17:00; Sun off.

## Schedule

| ID | WBS | Task | Type | Duration | Start | Finish | Predecessors | Baseline start | Baseline finish | Baseline duration | Total slack | Free slack | Activity ID |
| --- | --- | --- | --- | --- | --- | --- | --- | --- | --- | --- | --- | --- | --- |
| 1 | 1 | **Design and Approvals** |  | 20d | 2026-10-05 | 2026-10-27 |  | 2026-10-05 | 2026-10-27 | 20d | 0d |  |  |
| 2 | 1.1 | Project start | milestone | 0d | 2026-10-05 | 2026-10-05 |  | 2026-10-05 | 2026-10-05 | 0d | 0d |  | A1000 |
| 3 | 1.2 | Site survey and roof assessment |  | 1d | 2026-10-05 | 2026-10-05 | 2 | 2026-10-05 | 2026-10-05 | 1d | 0d |  | A1010 |
| 4 | 1.3 | System design, layout and single line diagram |  | 3d | 2026-10-06 | 2026-10-08 | 3 | 2026-10-06 | 2026-10-08 | 3d | 0d |  | A1020 |
| 5 | 1.4 | Client design review and sign-off |  | 1d | 2026-10-09 | 2026-10-09 | 4 | 2026-10-09 | 2026-10-09 | 1d | 0d |  | A1030 |
| 6 | 1.5 | Design approved | milestone | 0d | 2026-10-09 | 2026-10-09 | 5 | 2026-10-09 | 2026-10-09 | 0d | 0d |  | A1040 |
| 7 | 1.6 | Submit grid connection application |  | 1d | 2026-10-10 | 2026-10-10 | 6 | 2026-10-10 | 2026-10-10 | 1d | 2d | 0d | A1050 |
| 8 | 1.7 | Utility approval and metering (external) |  | 14d | 2026-10-12 | 2026-10-27 | 7 | 2026-10-12 | 2026-10-27 | 14d | 2d |  | A1060 |
| 9 | 2 | **Procurement** |  | 8d | 2026-10-10 | 2026-10-19 |  | 2026-10-10 | 2026-10-19 | 8d | 0d |  |  |
| 10 | 2.1 | Bill of materials and purchase orders |  | 1d | 2026-10-10 | 2026-10-10 | 6 | 2026-10-10 | 2026-10-10 | 1d | 0d |  | A2010 |
| 11 | 2.2 | Module delivery, Longi 550 W N-type |  | 5d | 2026-10-12 | 2026-10-16 | 10 | 2026-10-12 | 2026-10-16 | 5d | 7d |  | A2020 |
| 12 | 2.3 | Inverter delivery, Growatt 20 kW |  | 6d | 2026-10-12 | 2026-10-17 | 10 | 2026-10-12 | 2026-10-17 | 6d | 5d | 4d | A2030 |
| 13 | 2.4 | Mounting structure fabrication and delivery |  | 7d | 2026-10-12 | 2026-10-19 | 10 | 2026-10-12 | 2026-10-19 | 7d | 0d |  | A2040 |
| 14 | 2.5 | Cables, protection and earthing delivery |  | 4d | 2026-10-12 | 2026-10-15 | 10 | 2026-10-12 | 2026-10-15 | 4d | 9d | 8d | A2050 |
| 15 | 3 | **Installation** |  | 8d | 2026-10-20 | 2026-10-28 |  | 2026-10-20 | 2026-10-28 | 8d | 0d |  |  |
| 16 | 3.1 | Site mobilisation, induction and setup |  | 1d | 2026-10-20 | 2026-10-20 | 13 | 2026-10-20 | 2026-10-20 | 1d | 0d |  | A3010 |
| 17 | 3.2 | Install mounting structure |  | 4d | 2026-10-21 | 2026-10-24 | 16 | 2026-10-21 | 2026-10-24 | 4d | 0d |  | A3020 |
| 18 | 3.3 | Install PV modules |  | 3d | 2026-10-26 | 2026-10-28 | 17, 11 | 2026-10-26 | 2026-10-28 | 3d | 0d |  | A3030 |
| 19 | 3.4 | DC string cabling and terminations |  | 2d | 2026-10-27 | 2026-10-28 | 18SS+1d | 2026-10-27 | 2026-10-28 | 2d | 0d |  | A3040 |
| 20 | 3.5 | Mount inverter and AC/DC protection boxes |  | 2d | 2026-10-23 | 2026-10-24 | 17SS+2d, 12 | 2026-10-23 | 2026-10-24 | 2d | 1d | 0d | A3050 |
| 21 | 3.6 | AC cabling to distribution board |  | 2d | 2026-10-26 | 2026-10-27 | 20, 14 | 2026-10-26 | 2026-10-27 | 2d | 1d |  | A3060 |
| 22 | 3.7 | Earthing and lightning protection |  | 2d | 2026-10-26 | 2026-10-27 | 17 | 2026-10-26 | 2026-10-27 | 2d | 1d |  | A3070 |
| 23 | 3.8 | Mechanical and electrical completion | milestone | 0d | 2026-10-28 | 2026-10-28 | 18, 19, 21, 22 | 2026-10-28 | 2026-10-28 | 0d | 0d |  | A3080 |
| 24 | 4 | **Testing, Commissioning and Handover** |  | 4d | 2026-10-29 | 2026-11-02 |  | 2026-10-29 | 2026-11-02 | 4d | 0d |  |  |
| 25 | 4.1 | Pre-commissioning inspection and testing |  | 1d | 2026-10-29 | 2026-10-29 | 23 | 2026-10-29 | 2026-10-29 | 1d | 0d |  | A4010 |
| 26 | 4.2 | Inverter setup, energisation and commissioning |  | 1d | 2026-10-30 | 2026-10-30 | 25, 8 | 2026-10-30 | 2026-10-30 | 1d | 0d |  | A4020 |
| 27 | 4.3 | Snagging and rectification |  | 1d | 2026-10-31 | 2026-10-31 | 26 | 2026-10-31 | 2026-10-31 | 1d | 0d |  | A4030 |
| 28 | 4.4 | As-builts, monitoring setup and handover |  | 1d | 2026-11-02 | 2026-11-02 | 27 | 2026-11-02 | 2026-11-02 | 1d | 0d |  | A4040 |
| 29 | 4.5 | Project complete | milestone | 0d | 2026-11-02 | 2026-11-02 | 28 | 2026-11-02 | 2026-11-02 | 0d | 0d |  | A4050 |
