# 20 kW On-Grid Residential Solar System

Schedule from Primavera P6, 2026-10-05 to 2026-11-02, data date 2026-10-05.

## Calendars

- 6 Day Workweek Mon to Sat: Mon-Fri 08:00-12:00, 13:00-17:00; Sat 08:00-16:00; Sun off.

## Schedule

| ID | WBS | Activity | Type | Duration | Start | Finish | Predecessors | Total float | Free float |
| --- | --- | --- | --- | --- | --- | --- | --- | --- | --- |
|  | 1.1 | **Design and Approvals** |  |  | 2026-10-05 | 2026-10-27 |  |  |  |
| A1000 |  | Project start | milestone | 0d | 2026-10-05 | 2026-10-05 |  | 0d |  |
| A1010 |  | Site survey and roof assessment |  | 1d | 2026-10-05 | 2026-10-05 | A1000 | 0d |  |
| A1020 |  | System design, layout and single line diagram |  | 3d | 2026-10-06 | 2026-10-08 | A1010 | 0d |  |
| A1030 |  | Client design review and sign-off |  | 1d | 2026-10-09 | 2026-10-09 | A1020 | 0d |  |
| A1040 |  | Design approved | milestone | 0d | 2026-10-09 | 2026-10-09 | A1030 | 0d |  |
| A1050 |  | Submit grid connection application |  | 1d | 2026-10-10 | 2026-10-10 | A1040 | 2d | 0d |
| A1060 |  | Utility approval and metering (external) |  | 14d | 2026-10-12 | 2026-10-27 | A1050 | 2d |  |
|  | 1.2 | **Procurement** |  |  | 2026-10-10 | 2026-10-19 |  |  |  |
| A2010 |  | Bill of materials and purchase orders |  | 1d | 2026-10-10 | 2026-10-10 | A1040 | 0d |  |
| A2020 |  | Module delivery, Longi 550 W N-type |  | 5d | 2026-10-12 | 2026-10-16 | A2010 | 7d |  |
| A2030 |  | Inverter delivery, Growatt 20 kW |  | 6d | 2026-10-12 | 2026-10-17 | A2010 | 5d | 4d |
| A2040 |  | Mounting structure fabrication and delivery |  | 7d | 2026-10-12 | 2026-10-19 | A2010 | 0d |  |
| A2050 |  | Cables, protection and earthing delivery |  | 4d | 2026-10-12 | 2026-10-15 | A2010 | 9d | 8d |
|  | 1.3 | **Installation** |  |  | 2026-10-20 | 2026-10-28 |  |  |  |
| A3010 |  | Site mobilisation, induction and setup |  | 1d | 2026-10-20 | 2026-10-20 | A2040 | 0d |  |
| A3020 |  | Install mounting structure |  | 4d | 2026-10-21 | 2026-10-24 | A3010 | 0d |  |
| A3050 |  | Mount inverter and AC/DC protection boxes |  | 2d | 2026-10-23 | 2026-10-24 | A3020 SS+2d, A2030 | 1d | 0d |
| A3030 |  | Install PV modules |  | 3d | 2026-10-26 | 2026-10-28 | A3020, A2020 | 0d |  |
| A3060 |  | AC cabling to distribution board |  | 2d | 2026-10-26 | 2026-10-27 | A3050, A2050 | 1d |  |
| A3070 |  | Earthing and lightning protection |  | 2d | 2026-10-26 | 2026-10-27 | A3020 | 1d |  |
| A3040 |  | DC string cabling and terminations |  | 2d | 2026-10-27 | 2026-10-28 | A3030 SS+1d | 0d |  |
| A3080 |  | Mechanical and electrical completion | milestone | 0d | 2026-10-28 | 2026-10-28 | A3030, A3040, A3060, A3070 | 0d |  |
|  | 1.4 | **Testing, Commissioning and Handover** |  |  | 2026-10-29 | 2026-11-02 |  |  |  |
| A4010 |  | Pre-commissioning inspection and testing |  | 1d | 2026-10-29 | 2026-10-29 | A3080 | 0d |  |
| A4020 |  | Inverter setup, energisation and commissioning |  | 1d | 2026-10-30 | 2026-10-30 | A4010, A1060 | 0d |  |
| A4030 |  | Snagging and rectification |  | 1d | 2026-10-31 | 2026-10-31 | A4020 | 0d |  |
| A4040 |  | As-builts, monitoring setup and handover |  | 1d | 2026-11-02 | 2026-11-02 | A4030 | 0d |  |
| A4050 |  | Project complete | milestone | 0d | 2026-11-02 | 2026-11-02 | A4040 | 0d |  |
