"Activity ID","Activity Name","WBS","Type","Original Duration (days)","Predecessors","Early Start (day)","Early Finish (day)","Total Float (days)"
"A1000","Project start","1.1","Start Milestone","0","","1","","0"
"A1010","Site survey and roof assessment","1.1","Task Dependent","1","A1000 FS","1","1","0"
"A1020","System design, layout and single line diagram","1.1","Task Dependent","3","A1010 FS","2","4","0"
"A1030","Client design review and sign-off","1.1","Task Dependent","1","A1020 FS","5","5","0"
"A1040","Design approved","1.1","Finish Milestone","0","A1030 FS","","5","0"
"A1050","Submit grid connection application","1.1","Task Dependent","1","A1040 FS","6","6","2"
"A1060","Utility approval and metering (external)","1.1","Task Dependent","14","A1050 FS","7","20","2"
"A2010","Bill of materials and purchase orders","1.2","Task Dependent","1","A1040 FS","6","6","0"
"A2020","Module delivery, Longi 550 W N-type","1.2","Task Dependent","5","A2010 FS","7","11","7"
"A2030","Inverter delivery, Growatt 20 kW","1.2","Task Dependent","6","A2010 FS","7","12","5"
"A2040","Mounting structure fabrication and delivery","1.2","Task Dependent","7","A2010 FS","7","13","0"
"A2050","Cables, protection and earthing delivery","1.2","Task Dependent","4","A2010 FS","7","10","9"
"A3010","Site mobilisation, induction and setup","1.3","Task Dependent","1","A2040 FS","14","14","0"
"A3020","Install mounting structure","1.3","Task Dependent","4","A3010 FS","15","18","0"
"A3030","Install PV modules","1.3","Task Dependent","3","A3020 FS; A2020 FS","19","21","0"
"A3040","DC string cabling and terminations","1.3","Task Dependent","2","A3030 SS+1","20","21","0"
"A3050","Mount inverter and AC/DC protection boxes","1.3","Task Dependent","2","A3020 SS+2; A2030 FS","17","18","1"
"A3060","AC cabling to distribution board","1.3","Task Dependent","2","A3050 FS; A2050 FS","19","20","1"
"A3070","Earthing and lightning protection","1.3","Task Dependent","2","A3020 FS","19","20","1"
"A3080","Mechanical and electrical completion","1.3","Finish Milestone","0","A3030 FS; A3040 FS; A3060 FS; A3070 FS","","21","0"
"A4010","Pre-commissioning inspection and testing","1.4","Task Dependent","1","A3080 FS","22","22","0"
"A4020","Inverter setup, energisation and commissioning","1.4","Task Dependent","1","A4010 FS; A1060 FS","23","23","0"
"A4030","Snagging and rectification","1.4","Task Dependent","1","A4020 FS","24","24","0"
"A4040","As-builts, monitoring setup and handover","1.4","Task Dependent","1","A4030 FS","25","25","0"
"A4050","Project complete","1.4","Finish Milestone","0","A4040 FS","","25","0"
